# FOCUSDATA

Schedule from MS Project, 2016-04-01 to 2018-02-26, A marks actual dates.

## Calendars

- 标准: Mon-Fri 08:00-12:00, 13:00-17:00; Sat-Sun off. Exceptions (off unless hours are given): 2016-04-16 08:00-12:00, 13:00-17:00, 2016-04-23 08:00-12:00, 13:00-17:00, 2016-04-30 08:00-12:00, 13:00-17:00, 2016-05-07 08:00-12:00, 13:00-17:00, 2016-05-14 08:00-12:00, 13:00-17:00, 2016-05-21 08:00-12:00, 13:00-17:00, 2016-05-28 08:00-12:00, 13:00-17:00, 2016-06-04 08:00-12:00, 13:00-17:00, 2016-06-11 08:00-12:00, 13:00-17:00, 2016-06-18 08:00-12:00, 13:00-17:00, 2016-06-25 08:00-12:00, 13:00-17:00, 2016-07-02 08:00-12:00, 13:00-17:00, 2016-07-09 08:00-12:00, 13:00-17:00, 2016-07-16 08:00-12:00, 13:00-17:00, 2016-07-23 08:00-12:00, 13:00-17:00, 2016-07-30 08:00-12:00, 13:00-17:00, 2016-08-06 08:00-12:00, 13:00-17:00, 2016-08-13 08:00-12:00, 13:00-17:00, 2016-08-20 08:00-12:00, 13:00-17:00, 2016-08-27 08:00-12:00, 13:00-17:00, 2016-09-03 08:00-12:00, 13:00-17:00, 2016-09-10 08:00-12:00, 13:00-17:00, 2016-09-17 08:00-12:00, 13:00-17:00, 2016-09-24 08:00-12:00, 13:00-17:00, 2016-10-01 08:00-12:00, 13:00-17:00, 2016-10-08 08:00-12:00, 13:00-17:00, 2016-10-15 08:00-12:00, 13:00-17:00, 2016-10-22 08:00-12:00, 13:00-17:00, 2016-10-29 08:00-12:00, 13:00-17:00.

## Resources

| Resource |
| --- |
| yinx |
| huidg |
| miaoyl |
| sunll |
| wangp |
| hu"yinx |
| sunll"idg |
| miaoyl. |

## Schedule

| ID | WBS | Task | Type | Duration | Start | Finish | Predecessors | Complete | Remaining | Total slack | Constraint | Resources | Work | Actual work |
| --- | --- | --- | --- | --- | --- | --- | --- | --- | --- | --- | --- | --- | --- | --- |
| 1 | 1 | **Contracts** |  | 0d | 2016-04-01 A | 2016-04-01 A |  | 100% |  |  |  |  |  |  |
| 2 | 1.1 | Supply Lot Sale Agreement | milestone | 0d | 2016-04-01 A | 2016-04-01 A |  | 100% |  |  | start no earlier than 2016-04-01 | yinx |  |  |
| 3 | 1.2 | Supply Construction Agreement | milestone | 0d | 2016-04-01 A | 2016-04-01 A |  | 100% |  |  | start no earlier than 2016-04-01 | yinx |  |  |
| 4 | 1.3 | Supply Contract Specifications | milestone | 0d | 2016-04-01 A | 2016-04-01 A | 3 | 100% |  |  | finish no earlier than 2016-04-08 | yinx |  |  |
| 5 | 1.4 | Supply Contract Site Plan | milestone | 0d | 2016-04-01 A | 2016-04-01 A | 3 | 100% |  |  | finish no earlier than 2016-04-08 | yinx |  |  |
| 6 | 1.5 | Secure Financing | milestone | 0d | 2016-04-01 A | 2016-04-01 A | 3 | 100% |  |  | finish no earlier than 2016-04-08 | huidg |  |  |
| 7 | 1.6 | Construction Loan Settlement | milestone | 0d | 2016-04-01 A | 2016-04-01 A |  | 100% |  |  | start no earlier than 2016-04-01 | huidg |  |  |
| 8 | 2 | **FocusData项目建设** |  | 155d | 2016-04-11 A | 2016-10-07 |  | 29% | 109.28d | 0d |  |  | 25464h | 5936h |
| 9 | 2.1 | **需求阶段** |  | 12d | 2016-04-11 A | 2016-04-23 A |  | 100% |  |  |  |  | 1968h | 1968h |
| 10 | 2.1.1 | **医疗黄页需求说明书** |  | 6d | 2016-04-11 A | 2016-04-16 A |  | 100% |  |  |  |  | 816h | 816h |
| 11 | 2.1.1.1 | **诊所管理** |  | 3d | 2016-04-11 A | 2016-04-13 A |  | 100% |  |  |  |  | 144h | 144h |
| 12 | 2.1.1.1.1 | 新诊所注册 |  | 3d | 2016-04-11 A | 2016-04-13 A |  | 100% |  |  |  | miaoyl; huidg | 48h | 48h |
| 13 | 2.1.1.1.2 | 修改医生信息 |  | 3d | 2016-04-11 A | 2016-04-13 A |  | 100% |  |  |  | miaoyl; huidg | 48h | 48h |
| 14 | 2.1.1.1.3 | 更改密码/忘记密码 |  | 3d | 2016-04-11 A | 2016-04-13 A |  | 100% |  |  |  | miaoyl; huidg | 48h | 48h |
| 15 | 2.1.1.2 | **用户个人管理** |  | 3d | 2016-04-11 A | 2016-04-13 A |  | 100% |  |  |  |  | 144h | 144h |
| 16 | 2.1.1.2.1 | 新用户注册 |  | 3d | 2016-04-11 A | 2016-04-13 A |  | 100% |  |  |  | miaoyl; huidg | 48h | 48h |
| 17 | 2.1.1.2.2 | 用户修改个人信息 |  | 3d | 2016-04-11 A | 2016-04-13 A |  | 100% |  |  |  | miaoyl; huidg | 48h | 48h |
| 18 | 2.1.1.2.3 | 更改密码/忘记密码 |  | 3d | 2016-04-11 A | 2016-04-13 A |  | 100% |  |  |  | miaoyl; huidg | 48h | 48h |
| 19 | 2.1.1.3 | **管理员界面** |  | 3d | 2016-04-11 A | 2016-04-13 A |  | 100% |  |  |  |  | 192h | 192h |
| 20 | 2.1.1.3.1 | 查询医生和用户 |  | 3d | 2016-04-11 A | 2016-04-13 A |  | 100% |  |  |  | miaoyl; huidg | 48h | 48h |
| 21 | 2.1.1.3.2 | 修改个人信息 |  | 3d | 2016-04-11 A | 2016-04-13 A |  | 100% |  |  |  | miaoyl; huidg | 48h | 48h |
| 22 | 2.1.1.3.3 | 重置账户密码 |  | 3d | 2016-04-11 A | 2016-04-13 A |  | 100% |  |  |  | miaoyl; huidg | 48h | 48h |
| 23 | 2.1.1.3.4 | 锁定账户 |  | 3d | 2016-04-11 A | 2016-04-13 A |  | 100% |  |  |  | miaoyl; huidg | 48h | 48h |
| 24 | 2.1.1.4 | **展示医生信息** |  | 3d | 2016-04-14 A | 2016-04-16 A | 19 | 100% |  |  |  |  | 96h | 96h |
| 25 | 2.1.1.4.1 | 根据类别展示医生 |  | 3d | 2016-04-14 A | 2016-04-16 A |  | 100% |  |  |  | miaoyl; huidg | 48h | 48h |
| 26 | 2.1.1.4.2 | 根据地区展示医生 |  | 3d | 2016-04-14 A | 2016-04-16 A |  | 100% |  |  |  | miaoyl; huidg | 48h | 48h |

| ID | WBS | Task | Duration | Start | Finish | Predecessors | Complete | Resources | Work | Actual work |
| --- | --- | --- | --- | --- | --- | --- | --- | --- | --- | --- |
| 27 | 2.1.1.5 | **搜索医生** | 3d | 2016-04-14 A | 2016-04-16 A | 19 | 100% |  | 144h | 144h |
| 28 | 2.1.1.5.1 | 根据类别搜索 | 3d | 2016-04-14 A | 2016-04-16 A |  | 100% | miaoyl; huidg | 48h | 48h |
| 29 | 2.1.1.5.2 | 根据医生信息搜索 | 3d | 2016-04-14 A | 2016-04-16 A |  | 100% | miaoyl; huidg | 48h | 48h |
| 30 | 2.1.1.5.3 | 根据距离搜索 | 3d | 2016-04-14 A | 2016-04-16 A |  | 100% | miaoyl; huidg | 48h | 48h |
| 31 | 2.1.1.6 | **在线预约医生** | 3d | 2016-04-14 A | 2016-04-16 A | 19 | 100% |  | 48h | 48h |
| 32 | 2.1.1.6.1 | 用户可在线预约医生 | 3d | 2016-04-14 A | 2016-04-16 A |  | 100% | miaoyl; huidg | 48h | 48h |
| 33 | 2.1.1.7 | **多语言** | 3d | 2016-04-14 A | 2016-04-16 A | 19 | 100% |  | 48h | 48h |
| 34 | 2.1.1.7.1 | 用户可选择语言配置 | 3d | 2016-04-14 A | 2016-04-16 A |  | 100% | miaoyl; huidg | 48h | 48h |
| 35 | 2.1.2 | **嵌入式预约模块需求说明书** | 6d | 2016-04-11 A | 2016-04-16 A |  | 100% |  | 384h | 384h |
| 36 | 2.1.2.1 | **嵌入式模块** | 6d | 2016-04-11 A | 2016-04-16 A |  | 100% |  | 96h | 96h |
| 37 | 2.1.2.1.1 | 嵌入式模块 | 6d | 2016-04-11 A | 2016-04-16 A |  | 100% | yinx; huidg | 96h | 96h |
| 38 | 2.1.2.2 | **在线预约医生** | 6d | 2016-04-11 A | 2016-04-16 A |  | 100% |  | 192h | 192h |
| 39 | 2.1.2.2.1 | 医生可预约时间表 | 6d | 2016-04-11 A | 2016-04-16 A |  | 100% | yinx; huidg | 96h | 96h |
| 40 | 2.1.2.2.2 | 预约医生 | 6d | 2016-04-11 A | 2016-04-16 A |  | 100% | yinx; huidg | 96h | 96h |
| 41 | 2.1.2.3 | **多语言** | 6d | 2016-04-11 A | 2016-04-16 A |  | 100% |  | 96h | 96h |
| 42 | 2.1.2.3.1 | 用户可选择语言配置 | 6d | 2016-04-11 A | 2016-04-16 A |  | 100% | yinx; huidg | 96h | 96h |
| 43 | 2.1.3 | **桥软件需求说明书** | 6d | 2016-04-18 A | 2016-04-23 A |  | 100% |  | 384h | 384h |
| 44 | 2.1.3.1 | **同步医院和服务端数据库** | 6d | 2016-04-18 A | 2016-04-23 A | 35 | 100% |  | 192h | 192h |
| 45 | 2.1.3.1.1 | 同步医生可预约时间 | 6d | 2016-04-18 A | 2016-04-23 A |  | 100% | yinx; huidg | 96h | 96h |
| 46 | 2.1.3.1.2 | 同步预约信息 | 6d | 2016-04-18 A | 2016-04-23 A |  | 100% | yinx; huidg | 96h | 96h |
| 47 | 2.1.3.2 | **初始化诊所** | 6d | 2016-04-18 A | 2016-04-23 A | 35 | 100% |  | 96h | 96h |
| 48 | 2.1.3.2.1 | 初始化诊所 | 6d | 2016-04-18 A | 2016-04-23 A |  | 100% | yinx; huidg | 96h | 96h |
| 49 | 2.1.3.3 | **创建系统服务** | 6d | 2016-04-18 A | 2016-04-23 A | 35 | 100% |  | 96h | 96h |
| 50 | 2.1.3.3.1 | 创建Windows服务 | 6d | 2016-04-18 A | 2016-04-23 A |  | 100% | yinx; huidg | 96h | 96h |

| ID | WBS | Task | Duration | Start | Finish | Predecessors | Complete | Resources | Work | Actual work |
| --- | --- | --- | --- | --- | --- | --- | --- | --- | --- | --- |
| 51 | 2.1.4 | **手机APP需求说明书** | 6d | 2016-04-18 A | 2016-04-23 A |  | 100% |  | 384h | 384h |
| 52 | 2.1.4.1 | **预约医生** | 6d | 2016-04-18 A | 2016-04-23 A | 10 | 100% |  | 288h | 288h |
| 53 | 2.1.4.1.1 | 搜索医生 | 6d | 2016-04-18 A | 2016-04-23 A |  | 100% | miaoyl; huidg | 96h | 96h |
| 54 | 2.1.4.1.2 | 预约医生 | 6d | 2016-04-18 A | 2016-04-23 A |  | 100% | miaoyl; huidg | 96h | 96h |
| 55 | 2.1.4.1.3 | 自动Check-in | 6d | 2016-04-18 A | 2016-04-23 A |  | 100% | miaoyl; huidg | 96h | 96h |
| 56 | 2.1.4.2 | **多语言** | 6d | 2016-04-18 A | 2016-04-23 A | 10 | 100% |  | 96h | 96h |
| 57 | 2.1.4.2.1 | 用户可选择语言配置 | 6d | 2016-04-18 A | 2016-04-23 A |  | 100% | miaoyl; huidg | 96h | 96h |
| 58 | 2.2 | **UI/UE设计阶段** | 12d | 2016-04-25 A | 2016-05-07 A |  | 100% |  | 1944h | 1944h |
| 59 | 2.2.1 | **医疗黄页UI/UE设计** | 6d | 2016-04-25 A | 2016-04-30 A |  | 100% |  | 792h | 792h |
| 60 | 2.2.1.1 | **诊所管理** | 3d | 2016-04-25 A | 2016-04-27 A | 9 | 100% |  | 144h | 144h |
| 61 | 2.2.1.1.1 | 新诊所注册 | 3d | 2016-04-25 A | 2016-04-27 A |  | 100% | miaoyl; sunll | 48h | 48h |
| 62 | 2.2.1.1.2 | 修改医生信息 | 3d | 2016-04-25 A | 2016-04-27 A |  | 100% | miaoyl; sunll | 48h | 48h |
| 63 | 2.2.1.1.3 | 更改密码/忘记密码 | 3d | 2016-04-25 A | 2016-04-27 A |  | 100% | miaoyl; sunll | 48h | 48h |
| 64 | 2.2.1.2 | **用户个人管理** | 3d | 2016-04-25 A | 2016-04-27 A | 9 | 100% |  | 144h | 144h |
| 65 | 2.2.1.2.1 | 新用户注册 | 3d | 2016-04-25 A | 2016-04-27 A |  | 100% | miaoyl; sunll | 48h | 48h |
| 66 | 2.2.1.2.2 | 用户修改个人信息 | 3d | 2016-04-25 A | 2016-04-27 A |  | 100% | miaoyl; sunll | 48h | 48h |
| 67 | 2.2.1.2.3 | 更改密码/忘记密码 | 3d | 2016-04-25 A | 2016-04-27 A |  | 100% | miaoyl; sunll | 48h | 48h |
| 68 | 2.2.1.3 | **管理员界面** | 3d | 2016-04-25 A | 2016-04-27 A | 9 | 100% |  | 168h | 168h |
| 69 | 2.2.1.3.1 | 查询医生和用户 | 3d | 2016-04-25 A | 2016-04-27 A |  | 100% | miaoyl; sunll | 48h | 48h |
| 70 | 2.2.1.3.2 | 修改个人信息 | 3d | 2016-04-25 A | 2016-04-27 A |  | 100% |  | 24h | 24h |
| 71 | 2.2.1.3.3 | 重置账户密码 | 3d | 2016-04-25 A | 2016-04-27 A |  | 100% | miaoyl; sunll | 48h | 48h |
| 72 | 2.2.1.3.4 | 锁定账户 | 3d | 2016-04-25 A | 2016-04-27 A |  | 100% | miaoyl; sunll | 48h | 48h |
| 73 | 2.2.1.4 | **展示医生信息** | 3d | 2016-04-28 A | 2016-04-30 A | 68 | 100% |  | 96h | 96h |
| 74 | 2.2.1.4.1 | 根据类别展示医生 | 3d | 2016-04-28 A | 2016-04-30 A |  | 100% | miaoyl; sunll | 48h | 48h |
| 75 | 2.2.1.4.2 | 根据地区展示医生 | 3d | 2016-04-28 A | 2016-04-30 A |  | 100% | miaoyl; sunll | 48h | 48h |

| ID | WBS | Task | Duration | Start | Finish | Predecessors | Complete | Resources | Work | Actual work |
| --- | --- | --- | --- | --- | --- | --- | --- | --- | --- | --- |
| 76 | 2.2.1.5 | **搜索医生** | 3d | 2016-04-28 A | 2016-04-30 A | 68 | 100% |  | 144h | 144h |
| 77 | 2.2.1.5.1 | 根据类别搜索 | 3d | 2016-04-28 A | 2016-04-30 A |  | 100% | miaoyl; sunll | 48h | 48h |
| 78 | 2.2.1.5.2 | 根据医生信息搜索 | 3d | 2016-04-28 A | 2016-04-30 A |  | 100% | miaoyl; sunll | 48h | 48h |
| 79 | 2.2.1.5.3 | 根据距离搜索 | 3d | 2016-04-28 A | 2016-04-30 A |  | 100% | miaoyl; sunll | 48h | 48h |
| 80 | 2.2.1.6 | **在线预约医生** | 3d | 2016-04-28 A | 2016-04-30 A | 68 | 100% |  | 48h | 48h |
| 81 | 2.2.1.6.1 | 用户可在线预约医生 | 3d | 2016-04-28 A | 2016-04-30 A |  | 100% | miaoyl; sunll | 48h | 48h |
| 82 | 2.2.1.7 | **多语言** | 3d | 2016-04-28 A | 2016-04-30 A | 68 | 100% |  | 48h | 48h |
| 83 | 2.2.1.7.1 | 用户可选择语言配置 | 3d | 2016-04-28 A | 2016-04-30 A |  | 100% | miaoyl; sunll | 48h | 48h |
| 84 | 2.2.2 | **嵌入式预约模块UI/UE设计** | 6d | 2016-04-25 A | 2016-04-30 A |  | 100% |  | 384h | 384h |
| 85 | 2.2.2.1 | **嵌入式模块** | 6d | 2016-04-25 A | 2016-04-30 A | 9 | 100% |  | 96h | 96h |
| 86 | 2.2.2.1.1 | 嵌入式模块 | 6d | 2016-04-25 A | 2016-04-30 A |  | 100% | yinx; sunll | 96h | 96h |
| 87 | 2.2.2.2 | **在线预约医生** | 6d | 2016-04-25 A | 2016-04-30 A | 9 | 100% |  | 192h | 192h |
| 88 | 2.2.2.2.1 | 医生可预约时间表 | 6d | 2016-04-25 A | 2016-04-30 A |  | 100% | yinx; sunll | 96h | 96h |
| 89 | 2.2.2.2.2 | 预约医生 | 6d | 2016-04-25 A | 2016-04-30 A |  | 100% | yinx; sunll | 96h | 96h |
| 90 | 2.2.2.3 | **多语言** | 6d | 2016-04-25 A | 2016-04-30 A | 9 | 100% |  | 96h | 96h |
| 91 | 2.2.2.3.1 | 用户可选择语言配置 | 6d | 2016-04-25 A | 2016-04-30 A |  | 100% | yinx; sunll | 96h | 96h |
| 92 | 2.2.3 | **桥软件UI/UE设计** | 6d | 2016-05-02 A | 2016-05-07 A |  | 100% |  | 384h | 384h |
| 93 | 2.2.3.1 | **同步医院和服务端数据库** | 6d | 2016-05-02 A | 2016-05-07 A | 84 | 100% |  | 192h | 192h |
| 94 | 2.2.3.1.1 | 同步医生可预约时间 | 6d | 2016-05-02 A | 2016-05-07 A |  | 100% | yinx; sunll | 96h | 96h |
| 95 | 2.2.3.1.2 | 同步预约信息 | 6d | 2016-05-02 A | 2016-05-07 A |  | 100% | yinx; sunll | 96h | 96h |
| 96 | 2.2.3.2 | **初始化诊所** | 6d | 2016-05-02 A | 2016-05-07 A | 84 | 100% |  | 96h | 96h |
| 97 | 2.2.3.2.1 | 初始化诊所 | 6d | 2016-05-02 A | 2016-05-07 A |  | 100% | yinx; sunll | 96h | 96h |
| 98 | 2.2.3.3 | **创建系统服务** | 6d | 2016-05-02 A | 2016-05-07 A | 84 | 100% |  | 96h | 96h |
| 99 | 2.2.3.3.1 | 创建Windows服务 | 6d | 2016-05-02 A | 2016-05-07 A |  | 100% | yinx; sunll | 96h | 96h |

| ID | WBS | Task | Duration | Start | Finish | Predecessors | Complete | Actual start | Resources | Work | Actual work |
| --- | --- | --- | --- | --- | --- | --- | --- | --- | --- | --- | --- |
| 100 | 2.2.4 | **手机APP UI/UE设计** | 6d | 2016-05-02 A | 2016-05-07 A |  | 100% |  |  | 384h | 384h |
| 101 | 2.2.4.1 | **预约医生** | 6d | 2016-05-02 A | 2016-05-07 A | 84 | 100% |  |  | 288h | 288h |
| 102 | 2.2.4.1.1 | 搜索医生 | 6d | 2016-05-02 A | 2016-05-07 A |  | 100% |  | miaoyl; sunll | 96h | 96h |
| 103 | 2.2.4.1.2 | 预约医生 | 6d | 2016-05-02 A | 2016-05-07 A |  | 100% |  | miaoyl; sunll | 96h | 96h |
| 104 | 2.2.4.1.3 | 自动Check-in | 6d | 2016-05-02 A | 2016-05-07 A |  | 100% |  | miaoyl; sunll | 96h | 96h |
| 105 | 2.2.4.2 | **多语言** | 6d | 2016-05-02 A | 2016-05-07 A | 84 | 100% |  |  | 96h | 96h |
| 106 | 2.2.4.2.1 | 用户可选择语言配置 | 6d | 2016-05-02 A | 2016-05-07 A |  | 100% |  | miaoyl; sunll | 96h | 96h |
| 107 | 2.3 | **设计阶段** | 12d | 2016-05-07 | 2016-05-21 A |  | 100% | 2016-05-09 |  | 2024h | 2024h |
| 108 | 2.3.1 | **医疗黄页数据设计** | 12d | 2016-05-09 A | 2016-05-21 A |  | 100% |  |  | 936h | 936h |
| 109 | 2.3.1.1 | **诊所管理** | 6d | 2016-05-09 A | 2016-05-14 A | 58 | 100% |  |  | 288h | 288h |
| 110 | 2.3.1.1.1 | 新诊所注册 | 6d | 2016-05-09 A | 2016-05-14 A |  | 100% |  | miaoyl; huidg | 96h | 96h |
| 111 | 2.3.1.1.2 | 修改医生信息 | 6d | 2016-05-09 A | 2016-05-14 A |  | 100% |  | miaoyl; huidg | 96h | 96h |
| 112 | 2.3.1.1.3 | 更改密码/忘记密码 | 6d | 2016-05-09 A | 2016-05-14 A |  | 100% |  | miaoyl; huidg | 96h | 96h |
| 113 | 2.3.1.2 | **用户个人管理** | 6d | 2016-05-09 A | 2016-05-14 A | 58 | 100% |  |  | 144h | 144h |
| 114 | 2.3.1.2.1 | 新用户注册 | 6d | 2016-05-09 A | 2016-05-14 A |  | 100% |  | miaoyl | 48h | 48h |
| 115 | 2.3.1.2.2 | 用户修改个人信息 | 6d | 2016-05-09 A | 2016-05-14 A |  | 100% |  | miaoyl | 48h | 48h |
| 116 | 2.3.1.2.3 | 更改密码/忘记密码 | 6d | 2016-05-09 A | 2016-05-14 A |  | 100% |  | miaoyl | 48h | 48h |
| 117 | 2.3.1.3 | **管理员界面** | 6d | 2016-05-09 A | 2016-05-14 A | 58 | 100% |  |  | 168h | 168h |
| 118 | 2.3.1.3.1 | 查询医生和用户 | 6d | 2016-05-09 A | 2016-05-14 A |  | 100% |  | miaoyl | 48h | 48h |
| 119 | 2.3.1.3.2 | 改个人信息 | 3d | 2016-05-09 A | 2016-05-11 A |  | 100% |  |  | 24h | 24h |
| 120 | 2.3.1.3.3 | 重置账户密码 | 6d | 2016-05-09 A | 2016-05-14 A |  | 100% |  | miaoyl | 48h | 48h |
| 121 | 2.3.1.3.4 | 锁定账户 | 6d | 2016-05-09 A | 2016-05-14 A |  | 100% |  | miaoyl | 48h | 48h |
| 122 | 2.3.1.4 | **展示医生信息** | 6d | 2016-05-16 A | 2016-05-21 A | 117 | 100% |  |  | 96h | 96h |
| 123 | 2.3.1.4.1 | 根据类别展示医生 | 6d | 2016-05-16 A | 2016-05-21 A |  | 100% |  | miaoyl | 48h | 48h |
| 124 | 2.3.1.4.2 | 根据地区展示医生 | 6d | 2016-05-16 A | 2016-05-21 A |  | 100% |  | miaoyl | 48h | 48h |

| ID | WBS | Task | Duration | Start | Finish | Predecessors | Complete | Constraint | Resources | Work | Actual work |
| --- | --- | --- | --- | --- | --- | --- | --- | --- | --- | --- | --- |
| 125 | 2.3.1.5 | **搜索医生** | 6d | 2016-05-16 A | 2016-05-21 A | 117 | 100% |  |  | 144h | 144h |
| 126 | 2.3.1.5.1 | 根据类别搜索 | 6d | 2016-05-16 A | 2016-05-21 A |  | 100% |  | miaoyl | 48h | 48h |
| 127 | 2.3.1.5.2 | 根据医生信息搜索 | 6d | 2016-05-16 A | 2016-05-21 A |  | 100% |  | miaoyl | 48h | 48h |
| 128 | 2.3.1.5.3 | 根据距离搜索 | 6d | 2016-05-16 A | 2016-05-21 A |  | 100% |  | miaoyl | 48h | 48h |
| 129 | 2.3.1.6 | **在线预约医生** | 6d | 2016-05-16 A | 2016-05-21 A | 117 | 100% |  |  | 48h | 48h |
| 130 | 2.3.1.6.1 | 用户可在线预约医生 | 6d | 2016-05-16 A | 2016-05-21 A |  | 100% |  | miaoyl | 48h | 48h |
| 131 | 2.3.1.7 | **多语言** | 6d | 2016-05-16 A | 2016-05-21 A | 117 | 100% |  |  | 48h | 48h |
| 132 | 2.3.1.7.1 | 用户可选择语言配置 | 6d | 2016-05-16 A | 2016-05-21 A |  | 100% |  | miaoyl | 48h | 48h |
| 133 | 2.3.2 | **嵌入式预约模块数据设计** | 12d | 2016-05-09 A | 2016-05-21 A |  | 100% |  |  | 384h | 384h |
| 134 | 2.3.2.1 | **嵌入式模块** | 12d | 2016-05-09 A | 2016-05-21 A | 58 | 100% |  |  | 96h | 96h |
| 135 | 2.3.2.1.1 | 嵌入式模块 | 12d | 2016-05-09 A | 2016-05-21 A |  | 100% |  | yinx | 96h | 96h |
| 136 | 2.3.2.2 | **在线预约医生** | 12d | 2016-05-09 A | 2016-05-21 A | 58 | 100% |  |  | 192h | 192h |
| 137 | 2.3.2.2.1 | 医生可预约时间表 | 12d | 2016-05-09 A | 2016-05-21 A |  | 100% |  | yinx | 96h | 96h |
| 138 | 2.3.2.2.2 | 预约医生 | 12d | 2016-05-09 A | 2016-05-21 A |  | 100% |  | yinx | 96h | 96h |
| 139 | 2.3.2.3 | **多语言** | 12d | 2016-05-09 A | 2016-05-21 A | 58 | 100% |  |  | 96h | 96h |
| 140 | 2.3.2.3.1 | 用户可选择语言配置 | 12d | 2016-05-09 A | 2016-05-21 A |  | 100% |  | yinx | 96h | 96h |
| 141 | 2.3.3 | **桥软件数据设计** | 12d | 2016-05-09 A | 2016-05-21 A |  | 100% |  |  | 384h | 384h |
| 142 | 2.3.3.1 | **同步医院和服务端数据库** | 12d | 2016-05-09 A | 2016-05-21 A | 93 | 100% |  |  | 192h | 192h |
| 143 | 2.3.3.1.1 | 同步医生可预约时间 | 12d | 2016-05-09 A | 2016-05-21 A |  | 100% | start no earlier than 2016-05-09 | yinx | 96h | 96h |
| 144 | 2.3.3.1.2 | 同步预约信息 | 12d | 2016-05-09 A | 2016-05-21 A |  | 100% | start no earlier than 2016-05-09 | yinx | 96h | 96h |
| 145 | 2.3.3.2 | **初始化诊所** | 12d | 2016-05-09 A | 2016-05-21 A | 93 | 100% |  |  | 96h | 96h |
| 146 | 2.3.3.2.1 | 初始化诊所 | 12d | 2016-05-09 A | 2016-05-21 A |  | 100% |  | yinx | 96h | 96h |
| 147 | 2.3.3.3 | **创建系统服务** | 12d | 2016-05-09 A | 2016-05-21 A | 93 | 100% |  |  | 96h | 96h |
| 148 | 2.3.3.3.1 | 创建Windows服务 | 12d | 2016-05-09 A | 2016-05-21 A |  | 100% |  | yinx | 96h | 96h |

| ID | WBS | Task | Duration | Start | Finish | Predecessors | Complete | Actual start | Total slack | Constraint | Resources | Work | Actual work |
| --- | --- | --- | --- | --- | --- | --- | --- | --- | --- | --- | --- | --- | --- |
| 149 | 2.3.4 | **手机APP数据设计** | 12d | 2016-05-07 | 2016-05-21 A |  | 100% | 2016-05-09 |  |  |  | 296h | 296h |
| 150 | 2.3.4.1 | **预约医生** | 12d | 2016-05-09 A | 2016-05-21 A | 100 | 100% |  |  |  |  | 288h | 288h |
| 151 | 2.3.4.1.1 | 搜索医生 | 12d | 2016-05-09 A | 2016-05-21 A |  | 100% |  |  |  | miaoyl | 96h | 96h |
| 152 | 2.3.4.1.2 | 预约医生 | 12d | 2016-05-09 A | 2016-05-21 A |  | 100% |  |  |  | miaoyl | 96h | 96h |
| 153 | 2.3.4.1.3 | 自动Check-in | 12d | 2016-05-09 A | 2016-05-21 A |  | 100% |  |  |  | miaoyl | 96h | 96h |
| 154 | 2.3.4.2 | **多语言** | 1d | 2016-05-07 | 2016-05-09 A | 100 | 100% | 2016-05-09 |  |  |  | 8h | 8h |
| 155 | 2.3.4.2.1 | 用户可选择语言配置 | 1d | 2016-05-09 A | 2016-05-09 A |  | 100% |  |  |  | miaoyl | 8h | 8h |
| 156 | 2.3.5 | milestone meeting | 1d | 2016-05-09 A | 2016-05-09 A |  | 100% |  |  | start no earlier than 2016-05-09 | huidg; yinx; miaoyl | 24h | 24h |
| 157 | 2.4 | **开发阶段** | 90d | 2016-05-23 | 2016-09-03 |  |  |  | 0d |  |  | 15552h |  |
| 158 | 2.4.1 | **医疗黄页研发** | 36d | 2016-05-23 | 2016-07-02 |  |  |  | 0d |  |  | 4608h |  |
| 159 | 2.4.1.1 | **诊所管理** | 18d | 2016-05-23 | 2016-06-11 | 107 |  |  | 18d |  |  | 864h |  |
| 160 | 2.4.1.1.1 | 新诊所注册 | 18d | 2016-05-23 | 2016-06-11 |  |  |  | 18d |  | miaoyl; sunll | 288h |  |
| 161 | 2.4.1.1.2 | 修改医生信息 | 18d | 2016-05-23 | 2016-06-11 |  |  |  | 18d |  | miaoyl; sunll | 288h |  |
| 162 | 2.4.1.1.3 | 更改密码/忘记密码 | 18d | 2016-05-23 | 2016-06-11 |  |  |  | 18d |  | miaoyl; sunll | 288h |  |
| 163 | 2.4.1.2 | **用户个人管理** | 18d | 2016-05-23 | 2016-06-11 | 107 |  |  | 18d |  |  | 864h |  |
| 164 | 2.4.1.2.1 | 新用户注册 | 18d | 2016-05-23 | 2016-06-11 |  |  |  | 18d |  | miaoyl; sunll | 288h |  |
| 165 | 2.4.1.2.2 | 用户修改个人信息 | 18d | 2016-05-23 | 2016-06-11 |  |  |  | 18d |  | miaoyl; sunll | 288h |  |
| 166 | 2.4.1.2.3 | 更改密码/忘记密码 | 18d | 2016-05-23 | 2016-06-11 |  |  |  | 18d |  | miaoyl; sunll | 288h |  |
| 167 | 2.4.1.3 | **管理员界面** | 18d | 2016-05-23 | 2016-06-11 | 107 |  |  | 0d |  |  | 864h |  |
| 168 | 2.4.1.3.1 | 查询医生和用户 | 18d | 2016-05-23 | 2016-06-11 |  |  |  | 0d |  | miaoyl; sunll | 288h |  |
| 169 | 2.4.1.3.2 | 改个人信息 | 18d | 2016-05-23 | 2016-06-11 |  |  |  | 0d |  |  |  |  |
| 170 | 2.4.1.3.3 | 重置账户密码 | 18d | 2016-05-23 | 2016-06-11 |  |  |  | 0d |  | miaoyl; sunll | 288h |  |
| 171 | 2.4.1.3.4 | 锁定账户 | 18d | 2016-05-23 | 2016-06-11 |  |  |  | 0d |  | miaoyl; sunll | 288h |  |
| 172 | 2.4.1.4 | **展示医生信息** | 18d | 2016-06-13 | 2016-07-02 | 167 |  |  | 0d |  |  | 576h |  |
| 173 | 2.4.1.4.1 | 根据类别展示医生 | 18d | 2016-06-13 | 2016-07-02 |  |  |  | 0d |  | miaoyl; sunll | 288h |  |
| 174 | 2.4.1.4.2 | 根据地区展示医生 | 18d | 2016-06-13 | 2016-07-02 |  |  |  | 0d |  | miaoyl; sunll | 288h |  |

| ID | WBS | Task | Type | Duration | Start | Finish | Predecessors | Total slack | Resources | Work |
| --- | --- | --- | --- | --- | --- | --- | --- | --- | --- | --- |
| 175 | 2.4.1.5 | **搜索医生** |  | 18d | 2016-06-13 | 2016-07-02 | 167 | 0d |  | 864h |
| 176 | 2.4.1.5.1 | 根据类别搜索 |  | 18d | 2016-06-13 | 2016-07-02 |  | 0d | miaoyl; sunll | 288h |
| 177 | 2.4.1.5.2 | 根据医生信息搜索 |  | 18d | 2016-06-13 | 2016-07-02 |  | 0d | miaoyl; sunll | 288h |
| 178 | 2.4.1.5.3 | 根据距离搜索 |  | 18d | 2016-06-13 | 2016-07-02 |  | 0d | miaoyl; sunll | 288h |
| 179 | 2.4.1.6 | **在线预约医生** |  | 18d | 2016-06-13 | 2016-07-02 | 167 | 0d |  | 288h |
| 180 | 2.4.1.6.1 | 用户可在线预约医生 |  | 18d | 2016-06-13 | 2016-07-02 |  | 0d | miaoyl; sunll | 288h |
| 181 | 2.4.1.7 | **多语言** |  | 18d | 2016-06-13 | 2016-07-02 | 167 | 0d |  | 288h |
| 182 | 2.4.1.7.1 | 用户可选择语言配置 |  | 18d | 2016-06-13 | 2016-07-02 |  | 0d | miaoyl; sunll | 288h |
| 183 | 2.4.2 | **嵌入式预约模块研发** |  | 36d | 2016-05-23 | 2016-07-02 |  | 0d |  | 2304h |
| 184 | 2.4.2.1 | **嵌入式模块** |  | 36d | 2016-05-23 | 2016-07-02 | 107 | 0d |  | 576h |
| 185 | 2.4.2.1.1 | 嵌入式模块 |  | 36d | 2016-05-23 | 2016-07-02 |  | 0d | yinx; sunll | 576h |
| 186 | 2.4.2.2 | **在线预约医生** |  | 36d | 2016-05-23 | 2016-07-02 | 107 | 0d |  | 1152h |
| 187 | 2.4.2.2.1 | 医生可预约时间表 |  | 36d | 2016-05-23 | 2016-07-02 |  | 0d | yinx; sunll | 576h |
| 188 | 2.4.2.2.2 | 预约医生 |  | 36d | 2016-05-23 | 2016-07-02 |  | 0d | yinx; sunll | 576h |
| 189 | 2.4.2.3 | **多语言** |  | 36d | 2016-05-23 | 2016-07-02 | 107 | 0d |  | 576h |
| 190 | 2.4.2.3.1 | 用户可选择语言配置 |  | 36d | 2016-05-23 | 2016-07-02 |  | 0d | yinx; sunll | 576h |
| 191 | 2.4.3 | milestone meeting | milestone | 0d | 2016-07-02 | 2016-07-02 | 189 | 54d | huidg; yinx; miaoyl |  |
| 192 | 2.4.4 | **桥软件研发** |  | 54d | 2016-07-04 | 2016-09-03 |  | 0d |  | 3456h |
| 193 | 2.4.4.1 | **同步医院和服务端数据库** |  | 54d | 2016-07-04 | 2016-09-03 | 183 | 0d |  | 1728h |
| 194 | 2.4.4.1.1 | 同步医生可预约时间 |  | 54d | 2016-07-04 | 2016-09-03 |  | 0d | yinx; sunll | 864h |
| 195 | 2.4.4.1.2 | 同步预约信息 |  | 54d | 2016-07-04 | 2016-09-03 |  | 0d | yinx; sunll | 864h |
| 196 | 2.4.4.2 | **初始化诊所** |  | 54d | 2016-07-04 | 2016-09-03 | 183 | 0d |  | 864h |
| 197 | 2.4.4.2.1 | 初始化诊所 |  | 54d | 2016-07-04 | 2016-09-03 |  | 0d | yinx; sunll | 864h |
| 198 | 2.4.4.3 | **创建系统服务** |  | 54d | 2016-07-04 | 2016-09-03 | 183 | 0d |  | 864h |
| 199 | 2.4.4.3.1 | 创建Windows服务 |  | 54d | 2016-07-04 | 2016-09-03 |  | 0d | yinx; sunll | 864h |
| 200 | 2.4.5 | milestone meeting | milestone | 0d | 2016-09-03 | 2016-09-03 | 192 | 0d | huidg; yinx; miaoyl |  |

| ID | WBS | Task | Duration | Start | Finish | Predecessors | Total slack | Resources | Work |
| --- | --- | --- | --- | --- | --- | --- | --- | --- | --- |
| 201 | 2.4.6 | **手机APP研发** | 54d | 2016-07-04 | 2016-09-03 |  | 0d |  | 5184h |
| 202 | 2.4.6.1 | **预约医生** | 54d | 2016-07-04 | 2016-09-03 | 158 | 0d |  | 3888h |
| 203 | 2.4.6.1.1 | 搜索医生 | 54d | 2016-07-04 | 2016-09-03 |  | 0d | miaoyl; wangp; sunll | 1296h |
| 204 | 2.4.6.1.2 | 预约医生 | 54d | 2016-07-04 | 2016-09-03 |  | 0d | miaoyl; wangp; sunll | 1296h |
| 205 | 2.4.6.1.3 | 自动Check-in | 54d | 2016-07-04 | 2016-09-03 |  | 0d | miaoyl; wangp; sunll | 1296h |
| 206 | 2.4.6.2 | **多语言** | 54d | 2016-07-04 | 2016-09-03 | 176 | 0d |  | 1296h |
| 207 | 2.4.6.2.1 | 用户可选择语言配置 | 54d | 2016-07-04 | 2016-09-03 |  | 0d | miaoyl; wangp; sunll | 1296h |
| 208 | 2.5 | **调试阶段** | 24d | 2016-09-05 | 2016-10-01 |  | 0d |  | 3840h |
| 209 | 2.5.1 | **医疗黄页调试** | 12d | 2016-09-05 | 2016-09-17 |  | 0d |  | 1536h |
| 210 | 2.5.1.1 | **诊所管理** | 6d | 2016-09-05 | 2016-09-10 | 157 | 6d |  | 288h |
| 211 | 2.5.1.1.1 | 新诊所注册 | 6d | 2016-09-05 | 2016-09-10 |  | 6d | miaoyl; huidg | 96h |
| 212 | 2.5.1.1.2 | 修改医生信息 | 6d | 2016-09-05 | 2016-09-10 |  | 6d | miaoyl; huidg | 96h |
| 213 | 2.5.1.1.3 | 更改密码/忘记密码 | 6d | 2016-09-05 | 2016-09-10 |  | 6d | miaoyl; huidg | 96h |
| 214 | 2.5.1.2 | **用户个人管理** | 6d | 2016-09-05 | 2016-09-10 | 157 | 6d |  | 288h |
| 215 | 2.5.1.2.1 | 新用户注册 | 6d | 2016-09-05 | 2016-09-10 |  | 6d | miaoyl; huidg | 96h |
| 216 | 2.5.1.2.2 | 用户修改个人信息 | 6d | 2016-09-05 | 2016-09-10 |  | 6d | miaoyl; huidg | 96h |
| 217 | 2.5.1.2.3 | 更改密码/忘记密码 | 6d | 2016-09-05 | 2016-09-10 |  | 6d | miaoyl; huidg | 96h |
| 218 | 2.5.1.3 | **管理员界面** | 6d | 2016-09-05 | 2016-09-10 | 157 | 0d |  | 288h |
| 219 | 2.5.1.3.1 | 查询医生和用户 | 6d | 2016-09-05 | 2016-09-10 |  | 0d | miaoyl; huidg | 96h |
| 220 | 2.5.1.3.2 | 改个人信息 | 6d | 2016-09-05 | 2016-09-10 |  | 0d |  |  |
| 221 | 2.5.1.3.3 | 重置账户密码 | 6d | 2016-09-05 | 2016-09-10 |  | 0d | miaoyl; huidg | 96h |
| 222 | 2.5.1.3.4 | 锁定账户 | 6d | 2016-09-05 | 2016-09-10 |  | 0d | miaoyl; huidg | 96h |
| 223 | 2.5.1.4 | **展示医生信息** | 6d | 2016-09-12 | 2016-09-17 | 218 | 0d |  | 192h |
| 224 | 2.5.1.4.1 | 根据类别展示医生 | 6d | 2016-09-12 | 2016-09-17 |  | 0d | miaoyl; huidg | 96h |
| 225 | 2.5.1.4.2 | 根据地区展示医生 | 6d | 2016-09-12 | 2016-09-17 |  | 0d | miaoyl; huidg | 96h |

| ID | WBS | Task | Duration | Start | Finish | Predecessors | Total slack | Resources | Work |
| --- | --- | --- | --- | --- | --- | --- | --- | --- | --- |
| 226 | 2.5.1.5 | **搜索医生** | 6d | 2016-09-12 | 2016-09-17 | 218 | 0d |  | 288h |
| 227 | 2.5.1.5.1 | 根据类别搜索 | 6d | 2016-09-12 | 2016-09-17 |  | 0d | miaoyl; huidg | 96h |
| 228 | 2.5.1.5.2 | 根据医生信息搜索 | 6d | 2016-09-12 | 2016-09-17 |  | 0d | miaoyl; huidg | 96h |
| 229 | 2.5.1.5.3 | 根据距离搜索 | 6d | 2016-09-12 | 2016-09-17 |  | 0d | miaoyl; huidg | 96h |
| 230 | 2.5.1.6 | **在线预约医生** | 6d | 2016-09-12 | 2016-09-17 | 218 | 0d |  | 96h |
| 231 | 2.5.1.6.1 | 用户可在线预约医生 | 6d | 2016-09-12 | 2016-09-17 |  | 0d | miaoyl; huidg | 96h |
| 232 | 2.5.1.7 | **多语言** | 6d | 2016-09-12 | 2016-09-17 | 218 | 0d |  | 96h |
| 233 | 2.5.1.7.1 | 用户可选择语言配置 | 6d | 2016-09-12 | 2016-09-17 |  | 0d | miaoyl; huidg | 96h |
| 234 | 2.5.2 | **嵌入式预约模块调试** | 12d | 2016-09-05 | 2016-09-17 |  | 0d |  | 768h |
| 235 | 2.5.2.1 | **嵌入式模块** | 12d | 2016-09-05 | 2016-09-17 | 157 | 0d |  | 192h |
| 236 | 2.5.2.1.1 | 嵌入式模块 | 12d | 2016-09-05 | 2016-09-17 |  | 0d | yinx; huidg | 192h |
| 237 | 2.5.2.2 | **在线预约医生** | 12d | 2016-09-05 | 2016-09-17 | 157 | 0d |  | 384h |
| 238 | 2.5.2.2.1 | 医生可预约时间表 | 12d | 2016-09-05 | 2016-09-17 |  | 0d | yinx; huidg | 192h |
| 239 | 2.5.2.2.2 | 预约医生 | 12d | 2016-09-05 | 2016-09-17 |  | 0d | yinx; huidg | 192h |
| 240 | 2.5.2.3 | **多语言** | 12d | 2016-09-05 | 2016-09-17 | 157 | 0d |  | 192h |
| 241 | 2.5.2.3.1 | 用户可选择语言配置 | 12d | 2016-09-05 | 2016-09-17 |  | 0d | yinx; huidg | 192h |
| 242 | 2.5.3 | **桥软件调试** | 12d | 2016-09-19 | 2016-10-01 |  | 0d |  | 768h |
| 243 | 2.5.3.1 | **同步医院和服务端数据库** | 12d | 2016-09-19 | 2016-10-01 | 234 | 0d |  | 384h |
| 244 | 2.5.3.1.1 | 同步医生可预约时间 | 12d | 2016-09-19 | 2016-10-01 |  | 0d | yinx; huidg | 192h |
| 245 | 2.5.3.1.2 | 同步预约信息 | 12d | 2016-09-19 | 2016-10-01 |  | 0d | yinx; huidg | 192h |
| 246 | 2.5.3.2 | **初始化诊所** | 12d | 2016-09-19 | 2016-10-01 | 234 | 0d |  | 192h |
| 247 | 2.5.3.2.1 | 初始化诊所 | 12d | 2016-09-19 | 2016-10-01 |  | 0d | yinx; huidg | 192h |
| 248 | 2.5.3.3 | **创建系统服务** | 12d | 2016-09-19 | 2016-10-01 | 234 | 0d |  | 192h |
| 249 | 2.5.3.3.1 | 创建Windows服务 | 12d | 2016-09-19 | 2016-10-01 |  | 0d | yinx; huidg | 192h |

| ID | WBS | Task | Duration | Start | Finish | Predecessors | Total slack | Resources | Work |
| --- | --- | --- | --- | --- | --- | --- | --- | --- | --- |
| 250 | 2.5.4 | **手机APP调试** | 12d | 2016-09-19 | 2016-10-01 |  | 0d |  | 768h |
| 251 | 2.5.4.1 | **预约医生** | 12d | 2016-09-19 | 2016-10-01 | 209 | 0d |  | 576h |
| 252 | 2.5.4.1.1 | 搜索医生 | 12d | 2016-09-19 | 2016-10-01 |  | 0d | miaoyl; huidg | 192h |
| 253 | 2.5.4.1.2 | 预约医生 | 12d | 2016-09-19 | 2016-10-01 |  | 0d | miaoyl; huidg | 192h |
| 254 | 2.5.4.1.3 | 自动Check-in | 12d | 2016-09-19 | 2016-10-01 |  | 0d | miaoyl; huidg | 192h |
| 255 | 2.5.4.2 | **多语言** | 12d | 2016-09-19 | 2016-10-01 | 209 | 0d |  | 192h |
| 256 | 2.5.4.2.1 | 用户可选择语言配置 | 12d | 2016-09-19 | 2016-10-01 |  | 0d | miaoyl; huidg | 192h |
| 257 | 2.6 | **发布阶段** | 3d | 2016-10-03 | 2016-10-05 | 208 | 0d |  | 120h |
| 258 | 2.6.1 | 医疗黄页发布 | 3d | 2016-10-03 | 2016-10-05 |  | 0d | yinx | 24h |
| 259 | 2.6.2 | 嵌入式预约模块发布 | 3d | 2016-10-03 | 2016-10-05 |  | 0d | yinx | 24h |
| 260 | 2.6.3 | 桥软件发布 | 3d | 2016-10-03 | 2016-10-05 |  | 0d | yinx | 24h |
| 261 | 2.6.4 | iphone手机APP发布 | 3d | 2016-10-03 | 2016-10-05 |  | 0d | yinx | 24h |
| 262 | 2.6.5 | Android手机APP发布 | 3d | 2016-10-03 | 2016-10-05 |  | 0d | yinx | 24h |
| 263 | 2.7 | 系统验收 | 2d | 2016-10-06 | 2016-10-07 | 257 | 0d | huidg | 16h |
| 264 | 3 | FocusData项目维护 | 365d | 2016-10-08 | 2018-02-26 | 263 | 0d | miaoyl | 2920h |
